# HMS Development Plan

Schedule from MS Project, 2015-04-21 to 2015-06-08.

## Calendars

- Standard: Mon-Fri 08:00-12:00, 13:00-17:00; Sat-Sun off.

## Resources

| Resource |
| --- |
| Faizal |
| Client |
| Syzawani |
| Ronald |
| Mervin |

## Schedule

| ID | WBS | Task | Type | Duration | Start | Finish | Predecessors | Total slack | Free slack | Constraint | Resources | Work |
| --- | --- | --- | --- | --- | --- | --- | --- | --- | --- | --- | --- | --- |
| 1 | 1 | **Planning Phrase Iter 1** |  | 5d | 2015-04-21 08:00 | 2015-04-27 17:00 |  |  |  |  | Faizal; Mervin; Ronald; Syzawani | 228h |
| 2 | 1.1 | Determine project specifications |  | 0.8h | 2015-04-21 08:00 | 2015-04-21 08:48 |  | 1.9d | 0d |  | Faizal; Syzawani; Mervin; Ronald; Client | 4h |
| 3 | 1.2 | Secure core resources |  | 1d | 2015-04-21 08:48 | 2015-04-22 08:48 | 2 | 1.9d | 0d |  | Mervin; Faizal; Ronald; Syzawani | 32h |
| 4 | 1.3 | Completion of TOR |  | 1d | 2015-04-22 08:48 | 2015-04-23 08:48 | 3 | 1.9d | 0d |  | Mervin; Faizal | 16h |
| 5 | 1.4 | Completion of project planning |  | 1d | 2015-04-23 08:48 | 2015-04-24 08:48 | 4 | 1.9d |  |  | Ronald; Syzawani | 16h |
| 6 | 1.5 | Review of TOR and Project Planning | milestone | 0d | 2015-04-27 17:00 | 2015-04-27 17:00 | 5 | 0d |  | must finish on 2015-04-27 17:00 |  |  |
| 7 | 2 | **Design Phrase Iter 1** |  | 6.5d | 2015-04-28 08:00 | 2015-05-06 12:00 | 6 | 0d |  |  | Faizal; Mervin; Ronald; Syzawani | 296h |
| 8 | 2.1 | Obtain approvals to proceed |  | 1d | 2015-04-28 08:00 | 2015-04-28 17:00 | 6 | 0d |  |  | Client; Faizal | 16h |
| 9 | 2.2 | Draft Software Architeture |  | 0.5d | 2015-04-29 08:00 | 2015-04-29 12:00 | 8 | 0d |  |  | Syzawani; Faizal; Mervin; Ronald | 16h |
| 10 | 2.3 | Design logical database (Booking System) |  | 1d | 2015-04-29 13:00 | 2015-04-30 12:00 | 9 | 0d |  |  | Faizal; Mervin | 16h |
| 11 | 2.4 | Design Housekeeping System layout |  | 8h | 2015-04-30 13:00 | 2015-05-01 12:00 | 10 | 0d |  |  | Syzawani | 8h |
| 12 | 2.5 | Design User Interface of software |  | 1d | 2015-05-01 13:00 | 2015-05-04 12:00 | 11 | 0d |  |  | Ronald | 8h |
| 13 | 2.6 | Develop delivery timeline |  | 1d | 2015-05-04 13:00 | 2015-05-05 12:00 | 12 | 0d |  |  | Client | 8h |
| 14 | 2.7 | Secure required resources for development |  | 1d | 2015-05-05 13:00 | 2015-05-06 12:00 | 13 | 0d |  |  | Faizal; Mervin | 16h |
| 15 | 2.8 | Review of Design | milestone | 0d | 2015-05-06 12:00 | 2015-05-06 12:00 | 14 | 0d |  | must finish on 2015-05-06 12:00 | Client |  |
| 16 | 3 | **Prototype Phrase Iter 1** |  | 11.25d | 2015-05-06 13:00 | 2015-05-21 15:00 |  | -0.62d | 0d |  | Faizal; Mervin; Ronald; Syzawani | 552h |
| 17 | 3.1 | Obtain approvals to proceed |  | 1d | 2015-05-06 13:00 | 2015-05-07 12:00 | 15 | -0.62d | 0d |  | Faizal | 8h |
| 18 | 3.2 | Coding of Database (Booking System) |  | 2.5d | 2015-05-07 13:00 | 2015-05-11 17:00 | 17 | -0.62d | 0d |  | Faizal; Mervin | 40h |
| 19 | 3.3 | Creating of CRUD (Booking system) |  | 2d | 2015-05-12 08:00 | 2015-05-13 17:00 | 18 | -0.62d | 0d |  | Syzawani; Ronald | 32h |
| 20 | 3.4 | Developing of user accounts (Booking system) |  | 2d | 2015-05-14 08:00 | 2015-05-15 17:00 | 19 | -0.62d | 0d |  | Faizal | 16h |
| 21 | 3.5 | Implementing payment module (Booking system) |  | 1d | 2015-05-18 08:00 | 2015-05-18 17:00 | 20 | -0.62d | 0d |  | Ronald | 8h |
| 22 | 3.6 | Conduct Testing (Primarily debugging) |  | 2d | 2015-05-19 08:00 | 2015-05-20 17:00 | 21 | -0.62d | 0d |  | Faizal; Mervin; Ronald; Syzawani | 64h |
| 23 | 3.7 | Prelimenary review of prototype (Team) |  | 6h | 2015-05-21 08:00 | 2015-05-21 15:00 | 22 | -0.62d | 0d |  | Faizal; Mervin; Ronald; Syzawani | 24h |
| 24 | 3.8 | Review of Prototype 1 | milestone | 0d | 2015-05-21 09:00 | 2015-05-21 09:00 | 23 | -0.62d | 0d | must finish on 2015-05-21 09:00 | Client |  |

| ID | WBS | Task | Type | Duration | Start | Finish | Predecessors | Total slack | Free slack | Constraint | Resources | Work |
| --- | --- | --- | --- | --- | --- | --- | --- | --- | --- | --- | --- | --- |
| 25 | 4 | **Prototype Phrase Iter 2** |  | 10d | 2015-05-21 08:00 | 2015-06-03 17:00 |  |  |  |  | Faizal; Mervin; Ronald; Syzawani | 504h |
| 26 | 4.1 | Obtain approvals to proceed |  | 1d | 2015-05-21 09:00 | 2015-05-22 09:00 | 24 | 2.54d | 0d |  | Faizal | 8h |
| 27 | 4.2 | Coding of housekeeping system |  | 2.33d | 2015-05-22 09:00 | 2015-05-26 11:40 | 26 | 2.54d | 0d |  | Syzawani; Faizal; Mervin | 56h |
| 28 | 4.3 | Coding of dashboard (Housekeeping system) |  | 2d | 2015-05-26 11:40 | 2015-05-28 11:40 | 27 | 2.54d | 0d |  | Ronald; Faizal | 32h |
| 29 | 4.4 | Develop code for user interface HMS (Overall) |  | 2d | 2015-05-28 11:40 | 2015-06-01 11:40 | 28 | 2.54d | 2.04d |  | Ronald | 16h |
| 30 | 4.5 | Coding of communication system |  | 2d | 2015-06-01 08:00 | 2015-06-02 17:00 |  | 4d |  | start no earlier than 2015-06-01 08:00 | Faizal; Syzawani | 32h |
| 31 | 4.6 | Developer testing (primary debugging) |  | 0.5d | 2015-06-02 08:00 | 2015-06-02 12:00 | 29FS-7.5% | 3.75d | 0.75d | start no earlier than 2015-06-02 08:00 | Ronald; Faizal; Mervin; Syzawani | 16h |
| 32 | 4.7 | Prelimenary review of prototype (Team) |  | 6h | 2015-06-03 10:00 | 2015-06-03 17:00 | 31 | 3d | 0d | finish no earlier than 2015-06-03 17:00 | Faizal; Mervin; Ronald; Syzawani | 24h |
| 33 | 4.8 | Review of Prototype 2 | milestone | 0d | 2015-06-03 17:00 | 2015-06-03 17:00 | 32 | 3d |  | finish no earlier than 2015-06-03 17:00 | Client |  |
| 34 | 5 | **Prototype Phrase Iter 3** |  | 2d | 2015-06-03 08:00 | 2015-06-04 17:00 |  |  |  |  | Faizal; Mervin; Ronald; Syzawani | 112h |
| 35 | 5.1 | Obtain approvals to proceed |  | 1d | 2015-06-03 08:00 | 2015-06-03 17:00 | 24 | 0.25d | 0d |  | Faizal | 8h |
| 36 | 5.2 | Protype 1 & 2 integration |  | 4h | 2015-06-04 08:00 | 2015-06-04 12:00 | 35 | 0.25d | 0d |  | Faizal; Mervin | 8h |
| 37 | 5.3 | Prototype Refinement |  | 4h | 2015-06-04 08:00 | 2015-06-04 12:00 |  | 0d |  | start no earlier than 2015-06-04 08:00 | Ronald; Syzawani | 8h |
| 38 | 5.4 | Developer testing (primary resolving any shortcomings ) |  | 4h | 2015-06-04 13:00 | 2015-06-04 17:00 | 37 | 0d |  |  | Faizal; Mervin; Ronald; Syzawani | 16h |
| 39 | 5.5 | Prelimenary review of prototype (Team) |  | 2h | 2015-06-04 13:00 | 2015-06-04 15:00 | 36 | 0.25d |  |  | Faizal; Mervin; Ronald; Syzawani | 8h |
| 40 | 5.6 | Review of Prototype 3 | milestone | 0d | 2015-06-04 17:00 | 2015-06-04 17:00 | 39 | 0d |  | must finish on 2015-06-04 17:00 | Client |  |
| 41 | 6 | **Deployment** |  | 3d | 2015-06-04 08:00 | 2015-06-08 17:00 |  |  |  |  |  | 38h |
| 42 | 6.1 | Obtain approvals to proceed |  | 2h | 2015-06-04 08:00 | 2015-06-04 10:00 |  | 2.75d |  |  | Faizal | 2h |
| 43 | 6.2 | Secure deployment resources |  | 2h | 2015-06-04 08:00 | 2015-06-04 10:00 |  | 2.62d | 0d |  | Mervin | 2h |
| 44 | 6.3 | Depoly Booking System to Web |  | 1h | 2015-06-04 10:00 | 2015-06-04 11:00 | 43 | 2.62d | 0d |  | Ronald; Syzawani | 2h |
| 45 | 6.4 | Deploy communications system | milestone | 0d | 2015-06-04 11:00 | 2015-06-04 11:00 | 44 | 2.62d | 0d |  | Mervin; Faizal |  |
| 46 | 6.5 | Deploy software | milestone | 0d | 2015-06-04 11:00 | 2015-06-04 11:00 | 45 | 2.62d | 0d |  | Mervin; Faizal; Ronald; Syzawani |  |
| 47 | 6.6 | Deployment complete | milestone | 0d | 2015-06-04 11:00 | 2015-06-04 11:00 | 46 | 2.62d |  |  | Faizal; Mervin; Ronald; Syzawani |  |
| 48 | 6.7 | Release software |  | 0.8d? | 2015-06-08 09:36 | 2015-06-08 17:00 |  | 0d |  | must finish on 2015-06-08 17:00 | Faizal; Mervin; Ronald; Syzawani; Client | 32h |
